Task Name,Start Date,End Date,Assignee,Status,Priority,Hours,Duration,Category,Description
M0: Project Proposal Approval,2025-10-02,2025-10-02,All,COMPLETED,HIGH,0,0 days,Milestone,"Project proposal officially approved by stakeholders. Project scope, timeline, budget, and team assignments confirmed. Documentation finalized and project officially initiated."
M1: Project Initialization,2025-10-03,2025-10-03,All,COMPLETED,HIGH,0,0 days,Milestone,"Project structure established with Next.js 14, initial component library setup, dynamic data system implemented, and comprehensive README created. All initial configuration and setup tasks completed."
Project Initialization,2025-10-03,2025-10-03,Aliwate,COMPLETED,HIGH,8,1 day,Phase 1: Completed,"Establish project structure with Next.js 14, set up component library, implement dynamic data system, configure error handling and loading states. Create comprehensive README with setup instructions. Migrate from mock data to dynamic JSON system and fix all build errors."
Supabase Backend Integration,2025-10-04,2025-10-04,Aliwate,COMPLETED,HIGH,8,1 day,Phase 1: Completed,"Integrate Supabase backend services, configure database connections, set up real-time data subscriptions, and ensure proper runtime error handling across all modules."
Authentication System,2025-10-04,2025-10-04,Aliwate,COMPLETED,HIGH,8,1 day,Phase 1: Completed,"Implement complete authentication flow including sign-in, sign-up, and sign-out functionality. Optimize sign-in performance, ensure data consistency, and add multi-user support with proper session management."
Multi-tenant Database Schema,2025-10-05,2025-10-05,Aliwate,COMPLETED,HIGH,8,1 day,Phase 1: Completed,"Design and implement multi-tenant DDL schema for BakeSync ERP system. Create database tables with proper tenant isolation, set up relationships, and ensure data security at the database level."
Role-Based Access Control,2025-10-05,2025-10-05,Aliwate,COMPLETED,HIGH,6,1 day,Phase 1: Completed,"Implement comprehensive role-based access control (RBAC) system. Fix navigation sidebar display issues, establish permission enforcement mechanisms, and ensure demo accounts work correctly with proper role assignments."
M2: Authentication & User Management,2025-10-05,2025-10-05,All,COMPLETED,HIGH,0,0 days,Milestone,"Complete authentication system implemented including sign-in, sign-up, sign-out, multi-step onboarding, email verification, multi-tenant database schema, and role-based access control. All user management features functional."
3-Phase Onboarding System,2025-10-06,2025-10-07,Aliwate,COMPLETED,HIGH,16,2 days,Phase 1: Completed,"Implement comprehensive 3-phase user registration and onboarding system. Includes Phase 1: User registration logic, Phase 2: Enhanced onboarding with clean data initialization, and Phase 3: Enhanced user management with production features. Add completion tracking and proper redirection logic."
Email Verification Workflow,2025-10-06,2025-10-07,Aliwate,COMPLETED,HIGH,8,2 days,Phase 1: Completed,"Create complete email verification workflow using Supabase API. Implement email code validation, proper error handling, fix validation issues, and ensure smooth login redirect flow. Add conditional error display to suppress validation errors for valid codes."
Dynamic Routing System,2025-10-06,2025-10-06,Aliwate,COMPLETED,HIGH,8,1 day,Phase 1: Completed,"Implement dynamic routing with slug-based URLs and environment-specific data loading. Fix routing issues and module resolution errors. Create dynamic bakeshop routing with comprehensive page system functionality."
Playwright Testing Suite,2025-10-06,2025-10-06,Aliwate,COMPLETED,HIGH,8,1 day,Phase 1: Completed,"Add comprehensive Playwright testing suite with BDD (Behavior-Driven Development) support using Cucumber/Gherkin. Create feature files and step definitions for automated testing across all modules."
Recipe Management System,2025-10-06,2025-10-07,Aliwate,COMPLETED,HIGH,16,2 days,Phase 1: Completed,"Implement comprehensive recipe views with role-based access control. Fix recipe views navigation and data loading issues. Ensure proper permissions for Owner, Baker, and Cashier roles."
M3: Core Business Modules,2025-10-06,2025-10-06,All,COMPLETED,HIGH,0,0 days,Milestone,"All core business modules implemented and functional: Recipe Management, Inventory Management, Point of Sale (POS), Production Management, Financial Management, Supply Chain Management, and Team Management. All modules with role-based access control."
Bug Fixes & Optimization,2025-10-07,2025-10-08,Aliwate,COMPLETED,HIGH,16,2 days,Phase 1: Completed,"Resolve demo account authentication issues, fix role-based interface problems, optimize interface stability to prevent glitching during interactions. Fix ReferenceError issues with dashboard data loading, complete user account deletion feature, and improve error state management."
M4: Testing Suite & QA,2025-10-07,2025-10-07,All,COMPLETED,HIGH,0,0 days,Milestone,"Comprehensive Playwright testing suite with BDD support implemented. Test coverage includes all modules, user workflows, and critical paths. Automated testing infrastructure in place and functioning."
Final Testing & Cleanup,2025-10-08,2025-10-10,Aliwate,COMPLETED,MEDIUM,24,3 days,Phase 1: Completed,"Conduct final testing for demo accounts, validate role-based access control, perform system stabilization. Clean up debugging files, finalize repository organization, and ensure all features are production-ready."
M5: UI/UX Polish & Bug Fixes,2025-10-08,2025-10-08,All,COMPLETED,HIGH,0,0 days,Milestone,"All major bugs fixed, interface stability optimized, demo accounts working correctly, role-based interfaces validated, and UI/UX enhancements completed. System is stable and ready for production testing."
